# rk_01

How a schedule from MS Project changed from version to version. A marks actual dates.

## Version 1 (saved 2023-03-21, file rk_01.mpp)

Note of the change: labs: final fixes

| ID | WBS | Task | Duration | Start | Finish | Predecessors |
| --- | --- | --- | --- | --- | --- | --- |
| 1 |  | Начало проекта | 0d | 2023-04-03 | 2023-04-03 |  |
| 2 |  | Установка ПО | 15d | 2023-04-04 | 2023-04-24 | 1FS+1d |
| 3 |  | Обучение персонала | 20d | 2023-04-18 | 2023-05-18 | 2SS+10d |
| 4 | 4 | **Разработка представительских сайтов** | 1d | 2023-04-03 | 2023-04-03 | 3 |
| 5 |  | Разработка сайта 1 | 5d | 2023-04-03 | 2023-04-07 |  |
| 6 |  | Разработка сайта 1 | 5d | 2023-04-06 | 2023-04-12 | 5FS-2d |
| 7 |  | Представительские сайты сосзданы | 0d | 2023-04-04 | 2023-04-04 | 4 |
| 8 | 6 | **Разработка корпоративного сайта** | 1d | 2023-04-03 | 2023-04-03 | 3 |
| 9 |  | Проектирование сайта | 5d | 2023-04-03 | 2023-04-07 |  |
| 10 |  | Программирование сайта | 15d | 2023-04-10 | 2023-04-28 | 9 |
| 11 |  | Наполнение сайта | 3d | 2023-04-26 | 2023-04-28 | 10FS-3d |
| 12 |  | Тестирование сайта | 5d | 2023-05-02 | 2023-05-10 | 11 |
| 13 |  | Сдача сайта заказчику | 0d | 2023-05-11 | 2023-05-11 | 12 |

## Version 2 (saved 2023-03-21, file rk_01_2.mpp)

Note of the change: Merge pull request #7 from migregal/rk_01

Last finish 2023-05-18 → 2023-07-07 (+50d).

Added:

| ID | Task | Duration | Start | Finish | Predecessors | Resources |
| --- | --- | --- | --- | --- | --- | --- |
| 6 | Разработка дизайна сайта 1 | 2d | 2023-06-02 | 2023-06-05 |  | Кузнецов |
| 7 | Программирование сайта 1 | 3d | 2023-06-06 | 2023-06-08 | 6 | Тимофеев |
| 9 | Разработка дизайна сайта 2 | 2d | 2023-06-07 | 2023-06-08 |  | Кузнецов |
| 10 | Программирование сайта 2 | 3d | 2023-06-09 | 2023-06-14 | 9 | Тимофеев |

Changed:

| ID | Task | Start | Finish | Duration | Total float | Other |
| --- | --- | --- | --- | --- | --- | --- |
| 2 | Установка ПО |  | 2023-04-24 → 2023-05-11 (+17d) | 15d → 25d | none → 0d |  |
| 3 | Обучение персонала |  | 2023-05-18 → 2023-06-01 (+14d) | 20d → 30d | none → 0d | resources Бумага [3 шт]; Картриджи для принтера; Кузнецов; Петров; Преподаватели; Соломин; Тимофеев; Яковлева → Бумага [3 шт]; Картриджи для принтера; Кузнецов; Петров; Преподаватели; Соломин; Тимофеев; Яковлева; Соколов |
| 4 | **Разработка представительских сайтов** | 2023-04-03 → 2023-06-02 (+60d) | 2023-04-03 → 2023-06-14 (+72d) | 1d → 8d | none → 17d |  |
| 5 | **Разработка сайта 1** | 2023-04-03 → 2023-06-02 (+60d) | 2023-04-07 → 2023-06-08 (+62d) |  | none → 17d | resources Кузнецов; Тимофеев → none |
| 8 | **Разработка сайта 2** | 2023-04-06 → 2023-06-07 (+62d) | 2023-04-12 → 2023-06-14 (+63d) |  | none → 17d | was named Разработка сайта 1; resources Кузнецов; Тимофеев → none |
| 11 | Представительские сайты сосзданы | 2023-04-04 → 2023-06-14 (+71d) | 2023-04-04 → 2023-06-14 (+71d) |  | none → 17d |  |
| 12 | **Разработка корпоративного сайта** | 2023-04-03 → 2023-06-02 (+60d) | 2023-04-03 → 2023-07-07 (+95d) | 1d → 25d | none → 0d |  |
| 13 | Проектирование сайта | 2023-04-03 → 2023-06-02 (+60d) | 2023-04-07 → 2023-06-08 (+62d) |  | none → 0d |  |
| 14 | Программирование сайта | 2023-04-10 → 2023-06-09 (+60d) | 2023-04-28 → 2023-06-30 (+63d) |  | none → 0d |  |
| 15 | Наполнение сайта | 2023-04-26 → 2023-06-28 (+63d) | 2023-04-28 → 2023-06-30 (+63d) |  | none → 0d |  |
| 16 | Тестирование сайта | 2023-05-02 → 2023-07-03 (+62d) | 2023-05-10 → 2023-07-07 (+58d) |  | none → 0d |  |
| 17 | Сдача сайта заказчику | 2023-05-11 → 2023-07-07 (+57d) | 2023-05-11 → 2023-07-07 (+57d) |  | none → 0d |  |

## Version 3 (saved 2023-03-21, file rk_01_1.mpp)

Note of the change: Merge pull request #7 from migregal/rk_01

Last finish 2023-07-07 → 2023-06-23 (-14d).

Changed:

| ID | Task | Start | Finish | Duration |
| --- | --- | --- | --- | --- |
| 2 | Установка ПО |  | 2023-05-11 → 2023-04-24 (-17d) | 25d → 15d |
| 3 | Обучение персонала |  | 2023-06-01 → 2023-05-18 (-14d) | 30d → 20d |
| 4 | **Разработка представительских сайтов** | 2023-06-02 → 2023-05-19 (-14d) | 2023-06-14 → 2023-05-30 (-15d) |  |
| 5 | **Разработка сайта 1** | 2023-06-02 → 2023-05-19 (-14d) | 2023-06-08 → 2023-05-25 (-14d) |  |
| 6 | Разработка дизайна сайта 1 | 2023-06-02 → 2023-05-19 (-14d) | 2023-06-05 → 2023-05-22 (-14d) |  |
| 7 | Программирование сайта 1 | 2023-06-06 → 2023-05-23 (-14d) | 2023-06-08 → 2023-05-25 (-14d) |  |
| 8 | **Разработка сайта 2** | 2023-06-07 → 2023-05-24 (-14d) | 2023-06-14 → 2023-05-30 (-15d) |  |
| 9 | Разработка дизайна сайта 2 | 2023-06-07 → 2023-05-24 (-14d) | 2023-06-08 → 2023-05-25 (-14d) |  |
| 10 | Программирование сайта 2 | 2023-06-09 → 2023-05-26 (-14d) | 2023-06-14 → 2023-05-30 (-15d) |  |
| 11 | Представительские сайты сосзданы | 2023-06-14 → 2023-05-30 (-15d) | 2023-06-14 → 2023-05-30 (-15d) |  |
| 12 | **Разработка корпоративного сайта** | 2023-06-02 → 2023-05-19 (-14d) | 2023-07-07 → 2023-06-23 (-14d) |  |
| 13 | Проектирование сайта | 2023-06-02 → 2023-05-19 (-14d) | 2023-06-08 → 2023-05-25 (-14d) |  |
| 14 | Программирование сайта | 2023-06-09 → 2023-05-26 (-14d) | 2023-06-30 → 2023-06-16 (-14d) |  |
| 15 | Наполнение сайта | 2023-06-28 → 2023-06-14 (-14d) | 2023-06-30 → 2023-06-16 (-14d) |  |
| 16 | Тестирование сайта | 2023-07-03 → 2023-06-19 (-14d) | 2023-07-07 → 2023-06-23 (-14d) |  |
| 17 | Сдача сайта заказчику | 2023-07-07 → 2023-06-23 (-14d) | 2023-07-07 → 2023-06-23 (-14d) |  |

## Version 4 (data date 2023-06-06, saved 2023-03-21, file rk_01_3.mpp)

Note of the change: rk-01: finished & fixes lab 03

Last finish 2023-06-23 → 2023-06-16 (-7d). Complete tasks 0 → 6.

Changed:

| ID | Task | Start | Finish | Duration | Complete | Total float | Other |
| --- | --- | --- | --- | --- | --- | --- | --- |
| 1 | Начало проекта | 2023-04-03 A | 2023-04-03 A |  | 0% → 100% | 0d → none | baseline start none → 2023-04-03; baseline finish none → 2023-04-03 |
| 2 | Установка ПО | 2023-04-04 A | 2023-04-24 A |  | 0% → 100% | 0d → none | baseline start none → 2023-04-04; baseline finish none → 2023-04-24 |
| 3 | Обучение персонала | 2023-04-18 A | 2023-05-18 A |  | 0% → 100% | 0d → none | baseline start none → 2023-04-18; baseline finish none → 2023-05-18 |
| 4 | **Разработка представительских сайтов** | 2023-05-19 A | 2023-05-30 → 2023-06-16 (+17d) | 8d → 20d | 0% → 58% | 17d → 0d | baseline start none → 2023-05-19; baseline finish none → 2023-06-14 |
| 5 | **Разработка сайта 1** | 2023-05-19 A | 2023-05-25 → 2023-06-08 (+14d) | 5d → 15d | 0% → 71% | 17d → 0d | baseline start none → 2023-05-19; baseline finish none → 2023-05-25 |
| 6 | Разработка дизайна сайта 1 | 2023-05-19 A | 2023-05-22 A |  | 0% → 100% | 17d → none | baseline start none → 2023-05-19; baseline finish none → 2023-05-22 |
| 7 | Программирование сайта 1 | 2023-05-23 A | 2023-05-25 → 2023-06-08 (+14d) | 3d → 5d | 0% → 60% | 17d → 0d | baseline start none → 2023-05-23; baseline finish none → 2023-05-25 |
| 8 | **Разработка сайта 2** | 2023-05-24 A | 2023-05-30 → 2023-06-16 (+17d) | 5d → 17d | 0% → 40% | 17d → 0d | baseline start none → 2023-05-24; baseline finish none → 2023-06-14 |
| 9 | Разработка дизайна сайта 2 | 2023-05-24 A | 2023-05-25 A |  | 0% → 100% | 17d → none | baseline start none → 2023-05-24; baseline finish none → 2023-05-25 |
| 10 | Программирование сайта 2 | 2023-05-26 → 2023-06-14 (+19d) | 2023-05-30 → 2023-06-16 (+17d) |  |  | 17d → 0d | baseline start none → 2023-06-09; baseline finish none → 2023-06-14 |
| 11 | Представительские сайты сосзданы | 2023-05-30 → 2023-06-16 (+17d) | 2023-05-30 → 2023-06-16 (+17d) |  |  | 17d → 0d | baseline start none → 2023-06-14; baseline finish none → 2023-06-14 |
| 12 | **Разработка корпоративного сайта** | 2023-05-19 A | 2023-06-23 → 2023-06-16 (-7d) | 25d → 19.33d | 0% → 60% | 0d → 0.67d | baseline start none → 2023-05-19; baseline finish none → 2023-06-15 |
| 13 | Проектирование сайта | 2023-05-19 A | 2023-05-25 A |  | 0% → 100% | 0d → none | baseline start none → 2023-05-19; baseline finish none → 2023-05-25 |
| 14 | Программирование сайта | 2023-05-26 A | 2023-06-16 → 2023-06-13 (-3d) | 15d → 12d | 0% → 67% |  | resources Соломин; Яковлева → Соломин; Яковлева; Тимофеев; baseline start none → 2023-05-26; baseline finish none → 2023-06-08 |
| 15 | Наполнение сайта | 2023-06-14 → 2023-06-06 A (-8d) | 2023-06-16 → 2023-06-09 (-7d) |  | 0% → 33% | 0d → 0.67d | baseline start none → 2023-06-06; baseline finish none → 2023-06-08 |
| 16 | Тестирование сайта | 2023-06-19 → 2023-06-13 (-6d) | 2023-06-23 → 2023-06-16 (-7d) | 5d → 3.33d |  | 0d → 0.67d | resources Соломин; Яковлева → Соломин; Яковлева; Фомина; baseline start none → 2023-06-09; baseline finish none → 2023-06-15 |
| 17 | Сдача сайта заказчику | 2023-06-23 → 2023-06-16 (-7d) | 2023-06-23 → 2023-06-16 (-7d) |  |  | 0d → 0.67d | baseline start none → 2023-06-15; baseline finish none → 2023-06-15 |
